# Cronograma Escola XYZ

Schedule from MS Project, 2018-06-04 to 2018-08-08, costs in R$, A marks actual dates.

## Calendars

- Standard: Mon-Fri 08:00-12:00, 13:00-17:00; Sat-Sun off.

## Resources

| Resource | Rate |
| --- | --- |
| Diogo | 150 |
| Ádrian | 150 |
| Matheus | 150 |
| João | 150 |
| Cliente |  |
| GP Externo | 200 |

## Schedule

| ID | WBS | Task | Duration | Start | Finish | Predecessors | Complete | Remaining | Baseline start | Baseline finish | Baseline duration | Total slack | Resources | Work | Actual work | Cost | Baseline cost | Actual cost |
| --- | --- | --- | --- | --- | --- | --- | --- | --- | --- | --- | --- | --- | --- | --- | --- | --- | --- | --- |
| 1 | 1 | **Escola XYZ** | 47.42d? | 2018-06-04 08:00 A | 2018-08-08 11:23 |  | 20% | 37.71d? | 2018-06-04 08:00 | 2018-08-16 14:36 | 53.7d? | 0d |  | 170.8h | 48.8h | 25,560.06 | 45,250 | 7,260.06 |
| 2 | 1.1 | **Prospecção** | 3.52d | 2018-06-04 08:00 A | 2018-06-07 13:12 A |  | 100% |  | 2018-06-04 08:00 | 2018-06-06 13:42 | 2.59d |  |  | 19h | 19h | 2,860 | 2,110 | 2,860 |
| 3 | 1.1.1 | **Ptec** | 1.02d | 2018-06-04 08:00 A | 2018-06-05 08:12 A |  | 100% |  | 2018-06-04 08:00 | 2018-06-05 08:12 | 1.02d |  |  | 12h | 12h | 1,760 | 1,610 | 1,760 |
| 4 | 1.1.1.1 | Estudar Domínio de Aplicação | 0.25d | 2018-06-04 08:00 A | 2018-06-04 10:00 A |  | 100% |  | 2018-06-04 08:00 | 2018-06-04 10:00 | 0.25d |  | Ádrian [12.5%]; Diogo [12.5%]; João [12.5%]; Matheus [12.5%] | 1h | 1h | 150 | 150 | 150 |
| 5 | 1.1.1.2 | Reunião com o Fornecedor de Requisitos | 0.2d | 2018-06-04 10:00 A | 2018-06-04 11:36 A | 4 | 100% |  | 2018-06-04 10:00 | 2018-06-04 11:36 | 0.2d |  | Ádrian [25%]; Cliente [25%]; Diogo [25%]; João [25%]; Matheus [25%] | 2h | 2h | 240 | 240 | 240 |
| 6 | 1.1.1.3 | Redigir PTEC | 0.29d | 2018-06-04 11:36 A | 2018-06-04 14:56 A | 5 | 100% |  | 2018-06-04 11:36 | 2018-06-04 14:36 | 0.25d |  | Ádrian [75%]; Diogo [75%]; João [75%]; Matheus [75%] | 7h | 7h | 1,050 | 900 | 1,050 |
| 7 | 1.1.1.4 | Revisar PTEC | 0.12d | 2018-06-04 14:36 A | 2018-06-04 15:36 A | 6 | 100% |  | 2018-06-04 14:36 | 2018-06-04 15:36 | 0.12d |  | GP Externo | 1h | 1h | 200 | 200 | 200 |
| 8 | 1.1.1.5 | Aprova PTEC | 0.2d | 2018-06-04 15:36 A | 2018-06-05 08:12 A | 7 | 100% |  | 2018-06-04 15:36 | 2018-06-05 08:12 | 0.2d |  | Ádrian [12.5%]; Cliente [12.5%]; Diogo [12.5%]; João [12.5%]; Matheus [12.5%] | 1h | 1h | 120 | 120 | 120 |
| 9 | 1.1.2 | **Est. Prel. Tam** | 1.25d | 2018-06-05 08:12 A | 2018-06-06 10:12 A |  | 100% |  | 2018-06-05 08:12 | 2018-06-06 10:12 | 1.25d |  |  | 1.5h | 1.5h | 250 | 250 | 250 |
| 10 | 1.1.2.1 | Estimar Tamanho do Projeto | 0.25d | 2018-06-05 08:12 A | 2018-06-05 10:12 A | 8 | 100% |  | 2018-06-05 08:12 | 2018-06-05 10:12 | 0.25d |  | Ádrian [12.5%]; Diogo [12.5%]; João [12.5%]; Matheus [12.5%] | 1h | 1h | 150 | 150 | 150 |
| 11 | 1.1.2.2 | Revisar Estimativa de Tamanho do Projeto | 1d | 2018-06-05 10:12 A | 2018-06-06 10:12 A | 10 | 100% |  | 2018-06-05 10:12 | 2018-06-06 10:12 | 1d |  | GP Externo [6.2%] | 0.5h | 0.5h | 100 | 100 | 100 |
| 12 | 1.1.3 | **Est. Prel. Cronograma e Orçamentos** | 1.25d | 2018-06-06 10:12 A | 2018-06-07 13:12 A |  | 100% |  | 2018-06-06 10:12 | 2018-06-06 13:42 | 0.31d |  |  | 5.5h | 5.5h | 850 | 250 | 850 |
| 13 | 1.1.3.1 | Elaborar Cronograma e Orçamentos Preliminares | 1.25d | 2018-06-06 10:12 A | 2018-06-07 13:12 A | 11 | 100% |  | 2018-06-06 10:12 | 2018-06-06 13:12 | 0.25d |  | Ádrian [12.5%]; Diogo [12.5%]; João [12.5%]; Matheus [12.5%] | 5h | 5h | 750 | 150 | 750 |
| 14 | 1.1.3.2 | Revisão da Elaboração | 0.06d | 2018-06-06 13:12 A | 2018-06-06 13:42 A | 13 | 100% |  | 2018-06-06 13:12 | 2018-06-06 13:42 | 0.06d |  | GP Externo | 0.5h | 0.5h | 100 | 100 | 100 |
| 15 | 1.2 | **Análise** | 2.57d? | 2018-06-06 13:42 A | 2018-06-11 09:13 A |  | 100% |  | 2018-06-06 13:42 | 2018-06-11 10:13 | 2.69d? |  |  | 14h | 14h | 2,030 | 7,365 | 2,030 |
| 16 | 1.2.1 | **Documento de Requisitos** | 1.78d? | 2018-06-06 13:42 A | 2018-06-08 10:55 A |  | 100% |  | 2018-06-06 13:42 | 2018-06-08 13:43 | 2d? |  |  | 10h | 10h | 1,430 | 6,015 | 1,430 |
| 17 | 1.2.1.1 | Reunião com o Cliente | 0.05d? | 2018-06-06 13:42 A | 2018-06-06 14:06 A | 14 | 100% |  | 2018-06-06 13:42 | 2018-06-06 15:54 | 0.28d? |  | Ádrian; Cliente; Diogo; João; Matheus | 2h | 2h | 240 | 1,320 | 240 |
| 18 | 1.2.1.2 | Elaborar DRE | 0.16d? | 2018-06-06 15:54 A | 2018-06-07 08:09 A | 17 | 100% |  | 2018-06-06 15:54 | 2018-06-07 09:31 | 0.33d? |  | Ádrian; Diogo; João; Matheus | 5h | 5h | 750 | 1,575 | 750 |
| 19 | 1.2.1.3 | Revisar DRE | 0.12d? | 2018-06-07 09:31 A | 2018-06-07 10:31 A | 18 | 100% |  | 2018-06-07 09:31 | 2018-06-08 10:31 | 1.12d? |  | GP Externo | 1h | 1h | 200 | 1,800 | 200 |
| 20 | 1.2.1.4 | Submeter DRE para Aprovação | 0.05d? | 2018-06-08 10:31 A | 2018-06-08 10:55 A | 19 | 100% |  | 2018-06-08 10:31 | 2018-06-08 13:43 | 0.28d? |  | Ádrian; Cliente; Diogo; João; Matheus | 2h | 2h | 240 | 1,320 | 240 |
| 21 | 1.2.2 | **MRB** | 0.56d? | 2018-06-08 13:43 A | 2018-06-11 09:13 A |  | 100% |  | 2018-06-08 13:43 | 2018-06-11 10:13 | 0.69d? |  |  | 4h | 4h | 600 | 1,350 | 600 |
| 22 | 1.2.2.1 | Elaborar MRB | 0.25d? | 2018-06-08 13:43 A | 2018-06-08 15:43 A | 20 | 100% |  | 2018-06-08 13:43 | 2018-06-11 08:43 | 0.5d? |  | Ádrian [75%]; Diogo [75%] | 3h | 3h | 450 | 900 | 450 |
| 23 | 1.2.2.2 | Revisar MRB | 0.06d? | 2018-06-11 08:43 A | 2018-06-11 09:13 A | 22 | 100% |  | 2018-06-11 08:43 | 2018-06-11 10:13 | 0.19d? |  | João; Matheus | 1h | 1h | 150 | 450 | 150 |
| 24 | 1.3 | **Planejamento do Projeto** | 2.39d? | 2018-06-11 10:13 A | 2018-06-13 14:22 A |  | 100% |  | 2018-06-11 10:13 | 2018-06-14 08:13 | 2.75d? |  |  | 9h | 9h | 1,350.06 | 4,875 | 1,350.06 |
| 25 | 1.3.1 | **Diagrama de Classes** | 1.46d? | 2018-06-11 10:13 A | 2018-06-12 14:53 A |  | 100% |  | 2018-06-11 10:13 | 2018-06-12 16:13 | 1.62d? |  |  | 6h | 6h | 900 | 2,850 | 900 |
| 26 | 1.3.1.1 | Elaborar Diagrama de Classes | 0.19d? | 2018-06-11 10:13 A | 2018-06-11 11:43 A | 23 | 100% |  | 2018-06-11 10:13 | 2018-06-11 16:13 | 0.62d? |  | João; Matheus | 3h | 3h | 450 | 1,500 | 450 |
| 27 | 1.3.1.2 | Revisar Diagrama de Classes | 0.08d? | 2018-06-11 16:13 A | 2018-06-11 16:53 A | 26 | 100% |  | 2018-06-11 16:13 | 2018-06-12 11:13 | 0.5d? |  | Ádrian [75%]; Diogo [75%] | 1h | 1h | 150 | 900 | 150 |
| 28 | 1.3.1.3 | Atualizar MRB | 0.33d? | 2018-06-12 11:13 A | 2018-06-12 14:53 A | 27 | 100% |  | 2018-06-12 11:13 | 2018-06-12 16:13 | 0.5d? |  | João [37.5%]; Matheus [37.5%] | 2h | 2h | 300 | 450 | 300 |

| ID | WBS | Task | Duration | Start | Finish | Predecessors | Complete | Remaining | Baseline start | Baseline finish | Baseline duration | Total slack | Resources | Work | Actual work | Cost | Baseline cost | Actual cost |
| --- | --- | --- | --- | --- | --- | --- | --- | --- | --- | --- | --- | --- | --- | --- | --- | --- | --- | --- |
| 29 | 1.3.2 | **Modelo Entidade de Relacionamento** | 0.77d? | 2018-06-12 16:13 A | 2018-06-13 14:22 A |  | 100% |  | 2018-06-12 16:13 | 2018-06-14 08:13 | 1.12d? |  |  | 3h | 3h | 450.06 | 2,025 | 450.06 |
| 30 | 1.3.2.1 | Elaborar MER | 0.12d? | 2018-06-12 16:13 A | 2018-06-13 08:13 A | 28 | 100% |  | 2018-06-12 16:13 | 2018-06-13 13:13 | 0.62d? |  | Ádrian; Diogo | 2h | 2h | 300 | 1,500 | 300 |
| 31 | 1.3.2.2 | Revisar MER | 0.14d? | 2018-06-13 13:13 A | 2018-06-13 14:22 A | 30 | 100% |  | 2018-06-13 13:13 | 2018-06-14 08:13 | 0.5d? |  | João [43.8%]; Matheus [43.8%] | 1h | 1h | 150.06 | 525 | 150.06 |
| 32 | 1.4 | **Implementação** | 38.85d? | 2018-06-14 08:13 A | 2018-08-07 16:00 |  | 6% | 36.67d? | 2018-06-14 08:13 | 2018-08-16 09:13 | 45.12d? | 0d |  | 111.3h | 6.8h | 16,695 | 28,275 | 1,020 |
| 33 | 1.4.1 | **Realease 1** | 9.07d? | 2018-06-14 08:13 A | 2018-06-27 08:45 A |  | 100% |  | 2018-06-14 08:13 | 2018-06-28 08:13 | 10d? |  |  | 4.8h | 4.8h | 720 | 6,300 | 720 |
| 34 | 1.4.1.1 | **RFC01-Controle Professores** | 3.05d? | 2018-06-14 08:13 A | 2018-06-19 08:37 A |  | 100% |  | 2018-06-14 08:13 | 2018-06-20 08:13 | 4d? |  |  | 3.6h | 3.6h | 540 | 2,550 | 540 |
| 35 | 1.4.1.1.1 | RFS01-Cadastrar Professores | 0.6d? | 2018-06-14 08:13 A | 2018-06-14 14:01 A | 31 | 100% |  | 2018-06-14 08:13 | 2018-06-15 08:13 | 1d? |  | Diogo [62.5%] | 3h | 3h | 450 | 750 | 450 |
| 36 | 1.4.1.1.2 | RFS02-Consultar Professores | 0.05d? | 2018-06-15 08:13 A | 2018-06-15 08:37 A | 35 | 100% |  | 2018-06-15 08:13 | 2018-06-18 08:13 | 1d? |  | Diogo [50%] | 0.2h | 0.2h | 30 | 600 | 30 |
| 37 | 1.4.1.1.3 | RFS03-Modificar Professores | 0.05d? | 2018-06-18 08:13 A | 2018-06-18 08:37 A | 36 | 100% |  | 2018-06-18 08:13 | 2018-06-19 08:13 | 1d? |  | Diogo [50%] | 0.2h | 0.2h | 30 | 600 | 30 |
| 38 | 1.4.1.1.4 | RFS04-Remover Professores | 0.05d? | 2018-06-19 08:13 A | 2018-06-19 08:37 A | 37 | 100% |  | 2018-06-19 08:13 | 2018-06-20 08:13 | 1d? |  | Diogo [50%] | 0.2h | 0.2h | 30 | 600 | 30 |
| 39 | 1.4.1.2 | Teste RFC01 | 0.04d? | 2018-06-20 08:13 A | 2018-06-20 08:32 A | 38 | 100% |  | 2018-06-20 08:13 | 2018-06-21 08:13 | 1d? |  | João [62.5%] | 0.2h | 0.2h | 30 | 750 | 30 |
| 40 | 1.4.1.3 | **RFC02-Controle Alunos** | 3.05d? | 2018-06-21 08:13 A | 2018-06-26 08:37 A |  | 100% |  | 2018-06-21 08:13 | 2018-06-27 08:13 | 4d? |  |  | 0.8h | 0.8h | 120 | 2,550 | 120 |
| 41 | 1.4.1.3.1 | RFS05-Cadastrar Alunos | 0.04d? | 2018-06-21 08:13 A | 2018-06-21 08:32 A | 39 | 100% |  | 2018-06-21 08:13 | 2018-06-22 08:13 | 1d? |  | Matheus [62.5%] | 0.2h | 0.2h | 30 | 750 | 30 |
| 42 | 1.4.1.3.2 | RFS06-Consultar Alunos | 0.05d? | 2018-06-22 08:13 A | 2018-06-22 08:37 A | 41 | 100% |  | 2018-06-22 08:13 | 2018-06-25 08:13 | 1d? |  | Matheus [50%] | 0.2h | 0.2h | 30 | 600 | 30 |
| 43 | 1.4.1.3.3 | RFS07-Modificar Alunos | 0.05d? | 2018-06-25 08:13 A | 2018-06-25 08:37 A | 42 | 100% |  | 2018-06-25 08:13 | 2018-06-26 08:13 | 1d? |  | Matheus [50%] | 0.2h | 0.2h | 30 | 600 | 30 |
| 44 | 1.4.1.3.4 | RFS08-Remover Alunos | 0.05d? | 2018-06-26 08:13 A | 2018-06-26 08:37 A | 43 | 100% |  | 2018-06-26 08:13 | 2018-06-27 08:13 | 1d? |  | Matheus [50%] | 0.2h | 0.2h | 30 | 600 | 30 |
| 45 | 1.4.1.4 | Teste RFC02 | 0.07d? | 2018-06-27 08:13 A | 2018-06-27 08:45 A | 44 | 100% |  | 2018-06-27 08:13 | 2018-06-28 08:13 | 1d? |  | Ádrian [37.5%] | 0.2h | 0.2h | 30 | 450 | 30 |
| 46 | 1.4.2 | **Realease 2** | 4.28d? | 2018-06-27 08:45 A | 2018-07-03 11:00 A |  | 100% |  | 2018-06-28 08:13 | 2018-07-11 14:13 | 9.62d? |  |  | 2h | 2h | 300 | 6,300 | 300 |
| 47 | 1.4.2.1 | **RFC03-Controle Salas** | 3.05d? | 2018-06-27 08:45 A | 2018-07-02 09:09 A |  | 100% |  | 2018-06-28 08:13 | 2018-07-04 08:13 | 4d? |  |  | 0.8h | 0.8h | 120 | 2,550 | 120 |
| 48 | 1.4.2.1.1 | RFS09-Cadastrar Salas | 0.04d? | 2018-06-27 08:45 A | 2018-06-27 09:04 A | 45 | 100% |  | 2018-06-28 08:13 | 2018-06-29 08:13 | 1d? |  | João [62.5%] | 0.2h | 0.2h | 30 | 750 | 30 |
| 49 | 1.4.2.1.2 | RFS10-Consultar Salas | 0.05d? | 2018-06-28 08:45 A | 2018-06-28 09:09 A | 48 | 100% |  | 2018-06-29 08:13 | 2018-07-02 08:13 | 1d? |  | João [50%] | 0.2h | 0.2h | 30 | 600 | 30 |
| 50 | 1.4.2.1.3 | RFS11-Modificar Salas | 0.05d? | 2018-06-29 08:45 A | 2018-06-29 09:09 A | 49 | 100% |  | 2018-07-02 08:13 | 2018-07-03 08:13 | 1d? |  | João [50%] | 0.2h | 0.2h | 30 | 600 | 30 |
| 51 | 1.4.2.1.4 | RFS12-Remover Salas | 0.05d? | 2018-07-02 08:45 A | 2018-07-02 09:09 A | 50 | 100% |  | 2018-07-03 08:13 | 2018-07-04 08:13 | 1d? |  | João [50%] | 0.2h | 0.2h | 30 | 600 | 30 |
| 52 | 1.4.2.2 | Teste RFC03 | 0.07d? | 2018-07-03 08:45 A | 2018-07-03 09:17 A | 51 | 100% |  | 2018-07-04 08:13 | 2018-07-05 08:13 | 1d? |  | Matheus [37.5%] | 0.2h | 0.2h | 30 | 450 | 30 |

| ID | WBS | Task | Duration | Start | Finish | Predecessors | Complete | Baseline start | Baseline finish | Baseline duration | Total slack | Resources | Work | Actual work | Cost | Baseline cost | Actual cost |
| --- | --- | --- | --- | --- | --- | --- | --- | --- | --- | --- | --- | --- | --- | --- | --- | --- | --- |
| 53 | 1.4.2.3 | **RFC04-Controle Turmas** | 0.19d? | 2018-07-03 09:17 A | 2018-07-03 10:48 A |  | 100% | 2018-07-05 08:13 | 2018-07-11 08:13 | 4d? |  |  | 0.8h | 0.8h | 120 | 2,550 | 120 |
| 54 | 1.4.2.3.1 | RFS13-Cadastrar Turmas | 0.04d? | 2018-07-03 09:17 A | 2018-07-03 09:36 A | 52 | 100% | 2018-07-05 08:13 | 2018-07-06 08:13 | 1d? |  | Ádrian [62.5%] | 0.2h | 0.2h | 30 | 750 | 30 |
| 55 | 1.4.2.3.2 | RFS14-Consultar Turmas | 0.05d? | 2018-07-03 09:36 A | 2018-07-03 10:00 A | 54 | 100% | 2018-07-06 08:13 | 2018-07-09 08:13 | 1d? |  | Ádrian [50%] | 0.2h | 0.2h | 30 | 600 | 30 |
| 56 | 1.4.2.3.3 | RFS15-Modificar Turmas | 0.05d? | 2018-07-03 10:00 A | 2018-07-03 10:24 A | 55 | 100% | 2018-07-09 08:13 | 2018-07-10 08:13 | 1d? |  | Ádrian [50%] | 0.2h | 0.2h | 30 | 600 | 30 |
| 57 | 1.4.2.3.4 | RFS16-Remover Turmas | 0.05d? | 2018-07-03 10:24 A | 2018-07-03 10:48 A | 56 | 100% | 2018-07-10 08:13 | 2018-07-11 08:13 | 1d? |  | Ádrian [50%] | 0.2h | 0.2h | 30 | 600 | 30 |
| 58 | 1.4.2.4 | Teste RFC04 | 0.03d? | 2018-07-03 10:48 A | 2018-07-03 11:00 A | 57 | 100% | 2018-07-11 08:13 | 2018-07-11 14:13 | 0.62d? |  | Diogo | 0.2h | 0.2h | 30 | 750 | 30 |
| 59 | 1.4.3 | **Realease 3** | 10d? | 2018-07-03 11:00 | 2018-07-17 11:00 |  |  | 2018-07-11 14:13 | 2018-07-25 14:13 | 10d? | 0d |  | 41h |  | 6,150 | 6,150 |  |
| 60 | 1.4.3.1 | **RFC05-Controle Funcionários** | 4d? | 2018-07-03 11:00 | 2018-07-09 11:00 |  |  | 2018-07-11 14:13 | 2018-07-17 14:13 | 4d? | 0d |  | 17h |  | 2,550 | 2,550 |  |
| 61 | 1.4.3.1.1 | RFS17-Cadastrar Funcionários | 1d? | 2018-07-03 11:00 | 2018-07-04 11:00 | 58 |  | 2018-07-11 14:13 | 2018-07-12 14:13 | 1d? | 0d | Diogo [62.5%] | 5h |  | 750 | 750 |  |
| 62 | 1.4.3.1.2 | RFS18-Consultar Funcionários | 1d? | 2018-07-04 11:00 | 2018-07-05 11:00 | 61 |  | 2018-07-12 14:13 | 2018-07-13 14:13 | 1d? | 0d | Diogo [50%] | 4h |  | 600 | 600 |  |
| 63 | 1.4.3.1.3 | RFS19-Modificar Funcionários | 1d? | 2018-07-05 11:00 | 2018-07-06 11:00 | 62 |  | 2018-07-13 14:13 | 2018-07-16 14:13 | 1d? | 0d | Diogo [50%] | 4h |  | 600 | 600 |  |
| 64 | 1.4.3.1.4 | RFS20-Remover Funcionários | 1d? | 2018-07-06 11:00 | 2018-07-09 11:00 | 63 |  | 2018-07-16 14:13 | 2018-07-17 14:13 | 1d? | 0d | Diogo [50%] | 4h |  | 600 | 600 |  |
| 65 | 1.4.3.2 | Teste RFC05 | 1d? | 2018-07-09 11:00 | 2018-07-10 11:00 | 64 |  | 2018-07-17 14:13 | 2018-07-18 14:13 | 1d? | 0d | Matheus [50%] | 4h |  | 600 | 600 |  |
| 66 | 1.4.3.3 | **RFC06-Controle Equipamento** | 4d? | 2018-07-10 11:00 | 2018-07-16 11:00 |  |  | 2018-07-18 14:13 | 2018-07-24 14:13 | 4d? | 0d |  | 16h |  | 2,400 | 2,400 |  |
| 67 | 1.4.3.3.1 | RFS21-Cadastrar Equipamento | 1d? | 2018-07-10 11:00 | 2018-07-11 11:00 | 65 |  | 2018-07-18 14:13 | 2018-07-19 14:13 | 1d? | 0d | Ádrian [50%] | 4h |  | 600 | 600 |  |
| 68 | 1.4.3.3.2 | RFS22-Consultar Equipamento | 1d? | 2018-07-11 11:00 | 2018-07-12 11:00 | 67 |  | 2018-07-19 14:13 | 2018-07-20 14:13 | 1d? | 0d | Ádrian [50%] | 4h |  | 600 | 600 |  |
| 69 | 1.4.3.3.3 | RFS23-Modificar Equipamento | 1d? | 2018-07-12 11:00 | 2018-07-13 11:00 | 68 |  | 2018-07-20 14:13 | 2018-07-23 14:13 | 1d? | 0d | Ádrian [50%] | 4h |  | 600 | 600 |  |
| 70 | 1.4.3.3.4 | RFS24-Remover Equipamento | 1d? | 2018-07-13 11:00 | 2018-07-16 11:00 | 69 |  | 2018-07-23 14:13 | 2018-07-24 14:13 | 1d? | 0d | Ádrian [50%] | 4h |  | 600 | 600 |  |
| 71 | 1.4.3.4 | Teste RFC06 | 1d? | 2018-07-16 11:00 | 2018-07-17 11:00 | 70 |  | 2018-07-24 14:13 | 2018-07-25 14:13 | 1d? | 0d | João [50%] | 4h |  | 600 | 600 |  |
| 72 | 1.4.4 | **Realease 4** | 15.5d? | 2018-07-17 11:00 | 2018-08-07 16:00 |  |  | 2018-07-25 14:13 | 2018-08-16 09:13 | 15.5d? | 0d |  | 63.5h |  | 9,525 | 9,525 |  |
| 73 | 1.4.4.1 | **RFC07-Relatório de Matrícula de Alunos** | 1d? | 2018-07-17 11:00 | 2018-07-18 11:00 |  |  | 2018-07-25 14:13 | 2018-07-26 14:13 | 1d? | 0d |  | 4h |  | 600 | 600 |  |
| 74 | 1.4.4.1.1 | RFS25-Emitir Relatório de Matrícula de Alunos | 1d? | 2018-07-17 11:00 | 2018-07-18 11:00 | 71 |  | 2018-07-25 14:13 | 2018-07-26 14:13 | 1d? | 0d | Matheus [50%] | 4h |  | 600 | 600 |  |
| 75 | 1.4.4.2 | **RFC08-Relatório de Contrato de Professores** | 1d? | 2018-07-18 11:00 | 2018-07-19 11:00 |  |  | 2018-07-26 14:13 | 2018-07-27 14:13 | 1d? | 0d |  | 5h |  | 750 | 750 |  |
| 76 | 1.4.4.2.1 | RFS26-Emitir Relatório de Contrato de Professores | 1d? | 2018-07-18 11:00 | 2018-07-19 11:00 | 74 |  | 2018-07-26 14:13 | 2018-07-27 14:13 | 1d? | 0d | João [62.5%] | 5h |  | 750 | 750 |  |

| ID | WBS | Task | Duration | Start | Finish | Predecessors | Baseline start | Baseline finish | Baseline duration | Total slack | Resources | Work | Cost | Baseline cost |
| --- | --- | --- | --- | --- | --- | --- | --- | --- | --- | --- | --- | --- | --- | --- |
| 77 | 1.4.4.3 | **RNF01-Usabilidade** | 1d? | 2018-07-19 11:00 | 2018-07-20 11:00 |  | 2018-07-27 14:13 | 2018-07-30 14:13 | 1d? | 0d |  | 4h | 600 | 600 |
| 78 | 1.4.4.3.1 | RNF01-Interface de Sistemas | 1d? | 2018-07-19 11:00 | 2018-07-20 11:00 | 76 | 2018-07-27 14:13 | 2018-07-30 14:13 | 1d? | 0d | Ádrian [50%] | 4h | 600 | 600 |
| 79 | 1.4.4.4 | **RNF02-Desempemho** | 1d? | 2018-07-20 11:00 | 2018-07-23 11:00 |  | 2018-07-30 14:13 | 2018-07-31 14:13 | 1d? | 0d |  | 4h | 600 | 600 |
| 80 | 1.4.4.4.1 | RNF02-Sistema Otimizado | 1d? | 2018-07-20 11:00 | 2018-07-23 11:00 | 78 | 2018-07-30 14:13 | 2018-07-31 14:13 | 1d? | 0d | Diogo [50%] | 4h | 600 | 600 |
| 81 | 1.4.4.5 | **RNF03-Segurança** | 5d? | 2018-07-23 11:00 | 2018-07-30 11:00 |  | 2018-07-31 14:13 | 2018-08-07 14:13 | 5d? | 0d |  | 19h | 2,850 | 2,850 |
| 82 | 1.4.4.5.1 | RNF03-Segurança e Criptografia | 1d? | 2018-07-23 11:00 | 2018-07-24 11:00 | 80 | 2018-07-31 14:13 | 2018-08-01 14:13 | 1d? | 0d | Matheus [50%] | 4h | 600 | 600 |
| 83 | 1.4.4.5.2 | RNF04-Número Mínimo de Caracteres para Senha | 1d? | 2018-07-24 11:00 | 2018-07-25 11:00 | 82 | 2018-08-01 14:13 | 2018-08-02 14:13 | 1d? | 0d | Matheus [50%] | 4h | 600 | 600 |
| 84 | 1.4.4.5.3 | RNF05-Limite de Tentativas de Login | 1d? | 2018-07-25 11:00 | 2018-07-26 11:00 | 83 | 2018-08-02 14:13 | 2018-08-03 14:13 | 1d? | 0d | Matheus [50%] | 4h | 600 | 600 |
| 85 | 1.4.4.5.4 | RNF06-Logoff Automático | 1d? | 2018-07-26 11:00 | 2018-07-27 11:00 | 84 | 2018-08-03 14:13 | 2018-08-06 14:13 | 1d? | 0d | João [50%] | 4h | 600 | 600 |
| 86 | 1.4.4.5.5 | RNF07-Logs de Usuários | 1d? | 2018-07-27 11:00 | 2018-07-30 11:00 | 85 | 2018-08-06 14:13 | 2018-08-07 14:13 | 1d? | 0d | João [37.5%] | 3h | 450 | 450 |
| 87 | 1.4.4.6 | **RNF04-Confiabilidade** | 1d? | 2018-07-30 11:00 | 2018-07-31 11:00 |  | 2018-08-07 14:13 | 2018-08-08 14:13 | 1d? | 0d |  | 4h | 600 | 600 |
| 88 | 1.4.4.6.1 | RNF08-Sistema e Plataforma | 1d? | 2018-07-30 11:00 | 2018-07-31 11:00 | 86 | 2018-08-07 14:13 | 2018-08-08 14:13 | 1d? | 0d | João [50%] | 4h | 600 | 600 |
| 89 | 1.4.4.7 | Teste RFC07 | 1d? | 2018-07-31 11:00 | 2018-08-01 11:00 | 87 | 2018-08-08 14:13 | 2018-08-09 14:13 | 1d? | 0d | Ádrian [37.5%] | 3h | 450 | 450 |
| 90 | 1.4.4.8 | Teste RFC08 | 1d? | 2018-08-01 11:00 | 2018-08-02 11:00 | 89 | 2018-08-09 14:13 | 2018-08-10 14:13 | 1d? | 0d | Diogo [50%] | 4h | 600 | 600 |
| 91 | 1.4.4.9 | Teste RNF01 | 1d? | 2018-08-02 11:00 | 2018-08-03 11:00 | 90 | 2018-08-10 14:13 | 2018-08-13 14:13 | 1d? | 0d | Matheus [50%] | 4h | 600 | 600 |
| 92 | 1.4.4.10 | Teste RNF02 | 1d? | 2018-08-03 11:00 | 2018-08-06 11:00 | 91 | 2018-08-13 14:13 | 2018-08-14 14:13 | 1d? | 0d | João [37.5%] | 3h | 450 | 450 |
| 93 | 1.4.4.11 | Teste RNF03 | 0.5d? | 2018-08-06 11:00 | 2018-08-06 16:00 | 92 | 2018-08-14 14:13 | 2018-08-15 09:13 | 0.5d? | 0d | Ádrian [68.8%]; Diogo [68.8%] | 5.5h | 825 | 825 |
| 94 | 1.4.4.12 | Teste RNF04 | 1d? | 2018-08-06 16:00 | 2018-08-07 16:00 | 93 | 2018-08-15 09:13 | 2018-08-16 09:13 | 1d? | 0d | Diogo [50%] | 4h | 600 | 600 |
| 95 | 1.5 | **Monitoramento e Controle** | 0.55d? | 2018-08-07 16:00 | 2018-08-08 11:23 |  | 2018-08-16 09:13 | 2018-08-16 14:36 | 0.55d? | 0d |  | 17.5h | 2,625 | 2,625 |
| 96 | 1.5.1 | Acompanhar Projeto | 0.19d? | 2018-08-07 16:00 | 2018-08-08 08:30 | 94 | 2018-08-16 09:13 | 2018-08-16 10:43 | 0.19d? | 0d | Ádrian; Diogo; João; Matheus | 6h | 900 | 900 |
| 97 | 1.5.2 | **Gerência de Configuração** | 0.36d? | 2018-08-08 08:30 | 2018-08-08 11:23 |  | 2018-08-16 10:43 | 2018-08-16 14:36 | 0.36d? | 0d |  | 11.5h | 1,725 | 1,725 |
| 98 | 1.5.2.1 | Elaborar Branch | 0.2d? | 2018-08-08 08:30 | 2018-08-08 10:08 | 96 | 2018-08-16 10:43 | 2018-08-16 13:21 | 0.2d? | 0d | Ádrian; Diogo; João; Matheus | 6.5h | 975 | 975 |
| 99 | 1.5.2.2 | Realizar Merge da Branch para a Trunk | 0.16d? | 2018-08-08 10:08 | 2018-08-08 11:23 | 98 | 2018-08-16 13:21 | 2018-08-16 14:36 | 0.16d? | 0d | Ádrian; Diogo; João; Matheus | 5h | 750 | 750 |
