# Cronograma Escola XYZ

Schedule from MS Project, 2018-06-04 to 2018-08-16, costs in R$.

## Calendars

- Standard: Mon-Fri 08:00-12:00, 13:00-17:00; Sat-Sun off.

## Resources

| Resource | Rate |
| --- | --- |
| Diogo | 150 |
| Ádrian | 150 |
| Matheus | 150 |
| João | 150 |
| Cliente |  |
| GP Externo | 200 |

## Schedule

| ID | WBS | Task | Duration | Start | Finish | Predecessors | Total slack | Resources | Work | Cost |
| --- | --- | --- | --- | --- | --- | --- | --- | --- | --- | --- |
| 1 | 1 | **Escola XYZ** | 53.7d? | 2018-06-04 | 2018-08-16 |  | 0d |  | 303h | 45,250 |
| 2 | 1.1 | **Prospecção** | 2.59d | 2018-06-04 | 2018-06-06 |  | 0d |  | 14h | 2,110 |
| 3 | 1.1.1 | **Ptec** | 1.02d | 2018-06-04 | 2018-06-05 |  | 0d |  | 11h | 1,610 |
| 4 | 1.1.1.1 | Estudar Domínio de Aplicação | 0.25d | 2018-06-04 | 2018-06-04 |  | 0d | Ádrian [12.5%]; Diogo [12.5%]; João [12.5%]; Matheus [12.5%] | 1h | 150 |
| 5 | 1.1.1.2 | Reunião com o Fornecedor de Requisitos | 0.2d | 2018-06-04 | 2018-06-04 | 4 | 0d | Ádrian [25%]; Cliente [25%]; Diogo [25%]; João [25%]; Matheus [25%] | 2h | 240 |
| 6 | 1.1.1.3 | Redigir PTEC | 0.25d | 2018-06-04 | 2018-06-04 | 5 | 0d | Ádrian [75%]; Diogo [75%]; João [75%]; Matheus [75%] | 6h | 900 |
| 7 | 1.1.1.4 | Revisar PTEC | 0.12d | 2018-06-04 | 2018-06-04 | 6 | 0d | GP Externo | 1h | 200 |
| 8 | 1.1.1.5 | Aprova PTEC | 0.2d | 2018-06-04 | 2018-06-05 | 7 | 0d | Ádrian [12.5%]; Cliente [12.5%]; Diogo [12.5%]; João [12.5%]; Matheus [12.5%] | 1h | 120 |
| 9 | 1.1.2 | **Est. Prel. Tam** | 1.25d | 2018-06-05 | 2018-06-06 |  | 0d |  | 1.5h | 250 |
| 10 | 1.1.2.1 | Estimar Tamanho do Projeto | 0.25d | 2018-06-05 | 2018-06-05 | 8 | 0d | Ádrian [12.5%]; Diogo [12.5%]; João [12.5%]; Matheus [12.5%] | 1h | 150 |
| 11 | 1.1.2.2 | Revisar Estimativa de Tamanho do Projeto | 1d | 2018-06-05 | 2018-06-06 | 10 | 0d | GP Externo [6.2%] | 0.5h | 100 |
| 12 | 1.1.3 | **Est. Prel. Cronograma e Orçamentos** | 0.31d | 2018-06-06 | 2018-06-06 |  | 0d |  | 1.5h | 250 |
| 13 | 1.1.3.1 | Elaborar Cronograma e Orçamentos Preliminares | 0.25d | 2018-06-06 | 2018-06-06 | 11 | 0d | Ádrian [12.5%]; Diogo [12.5%]; João [12.5%]; Matheus [12.5%] | 1h | 150 |
| 14 | 1.1.3.2 | Revisão da Elaboração | 0.06d | 2018-06-06 | 2018-06-06 | 13 | 0d | GP Externo | 0.5h | 100 |
| 15 | 1.2 | **Análise** | 2.69d? | 2018-06-06 | 2018-06-11 |  | 0d |  | 50.5h | 7,365 |
| 16 | 1.2.1 | **Documento de Requisitos** | 2d? | 2018-06-06 | 2018-06-08 |  | 0d |  | 41.5h | 6,015 |
| 17 | 1.2.1.1 | Reunião com o Cliente | 0.28d? | 2018-06-06 | 2018-06-06 | 14 | 0d | Ádrian; Cliente; Diogo; João; Matheus | 11h | 1,320 |
| 18 | 1.2.1.2 | Elaborar DRE | 0.33d? | 2018-06-06 | 2018-06-07 | 17 | 0d | Ádrian; Diogo; João; Matheus | 10.5h | 1,575 |
| 19 | 1.2.1.3 | Revisar DRE | 1.12d? | 2018-06-07 | 2018-06-08 | 18 | 0d | GP Externo | 9h | 1,800 |
| 20 | 1.2.1.4 | Submeter DRE para Aprovação | 0.28d? | 2018-06-08 | 2018-06-08 | 19 | 0d | Ádrian; Cliente; Diogo; João; Matheus | 11h | 1,320 |
| 21 | 1.2.2 | **MRB** | 0.69d? | 2018-06-08 | 2018-06-11 |  | 0d |  | 9h | 1,350 |
| 22 | 1.2.2.1 | Elaborar MRB | 0.5d? | 2018-06-08 | 2018-06-11 | 20 | 0d | Ádrian [75%]; Diogo [75%] | 6h | 900 |
| 23 | 1.2.2.2 | Revisar MRB | 0.19d? | 2018-06-11 | 2018-06-11 | 22 | 0d | João; Matheus | 3h | 450 |
| 24 | 1.3 | **Planejamento do Projeto** | 2.75d? | 2018-06-11 | 2018-06-14 |  | 0d |  | 32.5h | 4,875 |
| 25 | 1.3.1 | **Diagrama de Classes** | 1.62d? | 2018-06-11 | 2018-06-12 |  | 0d |  | 19h | 2,850 |
| 26 | 1.3.1.1 | Elaborar Diagrama de Classes | 0.62d? | 2018-06-11 | 2018-06-11 | 23 | 0d | João; Matheus | 10h | 1,500 |
| 27 | 1.3.1.2 | Revisar Diagrama de Classes | 0.5d? | 2018-06-11 | 2018-06-12 | 26 | 0d | Ádrian [75%]; Diogo [75%] | 6h | 900 |
| 28 | 1.3.1.3 | Atualizar MRB | 0.5d? | 2018-06-12 | 2018-06-12 | 27 | 0d | João [37.5%]; Matheus [37.5%] | 3h | 450 |

| ID | WBS | Task | Duration | Start | Finish | Predecessors | Total slack | Resources | Work | Cost |
| --- | --- | --- | --- | --- | --- | --- | --- | --- | --- | --- |
| 29 | 1.3.2 | **Modelo Entidade de Relacionamento** | 1.12d? | 2018-06-12 | 2018-06-14 |  | 0d |  | 13.5h | 2,025 |
| 30 | 1.3.2.1 | Elaborar MER | 0.62d? | 2018-06-12 | 2018-06-13 | 28 | 0d | Ádrian; Diogo | 10h | 1,500 |
| 31 | 1.3.2.2 | Revisar MER | 0.5d? | 2018-06-13 | 2018-06-14 | 30 | 0d | João [43.8%]; Matheus [43.8%] | 3.5h | 525 |
| 32 | 1.4 | **Implementação** | 45.12d? | 2018-06-14 | 2018-08-16 |  | 0d |  | 188.5h | 28,275 |
| 33 | 1.4.1 | **Realease 1** | 10d? | 2018-06-14 | 2018-06-28 |  | 0d |  | 42h | 6,300 |
| 34 | 1.4.1.1 | **RFC01-Controle Professores** | 4d? | 2018-06-14 | 2018-06-20 |  | 0d |  | 17h | 2,550 |
| 35 | 1.4.1.1.1 | RFS01-Cadastrar Professores | 1d? | 2018-06-14 | 2018-06-15 | 31 | 0d | Diogo [62.5%] | 5h | 750 |
| 36 | 1.4.1.1.2 | RFS02-Consultar Professores | 1d? | 2018-06-15 | 2018-06-18 | 35 | 0d | Diogo [50%] | 4h | 600 |
| 37 | 1.4.1.1.3 | RFS03-Modificar Professores | 1d? | 2018-06-18 | 2018-06-19 | 36 | 0d | Diogo [50%] | 4h | 600 |
| 38 | 1.4.1.1.4 | RFS04-Remover Professores | 1d? | 2018-06-19 | 2018-06-20 | 37 | 0d | Diogo [50%] | 4h | 600 |
| 39 | 1.4.1.2 | Teste RFC01 | 1d? | 2018-06-20 | 2018-06-21 | 38 | 0d | João [62.5%] | 5h | 750 |
| 40 | 1.4.1.3 | **RFC02-Controle Alunos** | 4d? | 2018-06-21 | 2018-06-27 |  | 0d |  | 17h | 2,550 |
| 41 | 1.4.1.3.1 | RFS05-Cadastrar Alunos | 1d? | 2018-06-21 | 2018-06-22 | 39 | 0d | Matheus [62.5%] | 5h | 750 |
| 42 | 1.4.1.3.2 | RFS06-Consultar Alunos | 1d? | 2018-06-22 | 2018-06-25 | 41 | 0d | Matheus [50%] | 4h | 600 |
| 43 | 1.4.1.3.3 | RFS07-Modificar Alunos | 1d? | 2018-06-25 | 2018-06-26 | 42 | 0d | Matheus [50%] | 4h | 600 |
| 44 | 1.4.1.3.4 | RFS08-Remover Alunos | 1d? | 2018-06-26 | 2018-06-27 | 43 | 0d | Matheus [50%] | 4h | 600 |
| 45 | 1.4.1.4 | Teste RFC02 | 1d? | 2018-06-27 | 2018-06-28 | 44 | 0d | Ádrian [37.5%] | 3h | 450 |
| 46 | 1.4.2 | **Realease 2** | 9.62d? | 2018-06-28 | 2018-07-11 |  | 0d |  | 42h | 6,300 |
| 47 | 1.4.2.1 | **RFC03-Controle Salas** | 4d? | 2018-06-28 | 2018-07-04 |  | 0d |  | 17h | 2,550 |
| 48 | 1.4.2.1.1 | RFS09-Cadastrar Salas | 1d? | 2018-06-28 | 2018-06-29 | 45 | 0d | João [62.5%] | 5h | 750 |
| 49 | 1.4.2.1.2 | RFS10-Consultar Salas | 1d? | 2018-06-29 | 2018-07-02 | 48 | 0d | João [50%] | 4h | 600 |
| 50 | 1.4.2.1.3 | RFS11-Modificar Salas | 1d? | 2018-07-02 | 2018-07-03 | 49 | 0d | João [50%] | 4h | 600 |
| 51 | 1.4.2.1.4 | RFS12-Remover Salas | 1d? | 2018-07-03 | 2018-07-04 | 50 | 0d | João [50%] | 4h | 600 |
| 52 | 1.4.2.2 | Teste RFC03 | 1d? | 2018-07-04 | 2018-07-05 | 51 | 0d | Matheus [37.5%] | 3h | 450 |

| ID | WBS | Task | Duration | Start | Finish | Predecessors | Total slack | Resources | Work | Cost |
| --- | --- | --- | --- | --- | --- | --- | --- | --- | --- | --- |
| 53 | 1.4.2.3 | **RFC04-Controle Turmas** | 4d? | 2018-07-05 | 2018-07-11 |  | 0d |  | 17h | 2,550 |
| 54 | 1.4.2.3.1 | RFS13-Cadastrar Turmas | 1d? | 2018-07-05 | 2018-07-06 | 52 | 0d | Ádrian [62.5%] | 5h | 750 |
| 55 | 1.4.2.3.2 | RFS14-Consultar Turmas | 1d? | 2018-07-06 | 2018-07-09 | 54 | 0d | Ádrian [50%] | 4h | 600 |
| 56 | 1.4.2.3.3 | RFS15-Modificar Turmas | 1d? | 2018-07-09 | 2018-07-10 | 55 | 0d | Ádrian [50%] | 4h | 600 |
| 57 | 1.4.2.3.4 | RFS16-Remover Turmas | 1d? | 2018-07-10 | 2018-07-11 | 56 | 0d | Ádrian [50%] | 4h | 600 |
| 58 | 1.4.2.4 | Teste RFC04 | 0.62d? | 2018-07-11 | 2018-07-11 | 57 | 0d | Diogo | 5h | 750 |
| 59 | 1.4.3 | **Realease 3** | 10d? | 2018-07-11 | 2018-07-25 |  | 0d |  | 41h | 6,150 |
| 60 | 1.4.3.1 | **RFC05-Controle Funcionários** | 4d? | 2018-07-11 | 2018-07-17 |  | 0d |  | 17h | 2,550 |
| 61 | 1.4.3.1.1 | RFS17-Cadastrar Funcionários | 1d? | 2018-07-11 | 2018-07-12 | 58 | 0d | Diogo [62.5%] | 5h | 750 |
| 62 | 1.4.3.1.2 | RFS18-Consultar Funcionários | 1d? | 2018-07-12 | 2018-07-13 | 61 | 0d | Diogo [50%] | 4h | 600 |
| 63 | 1.4.3.1.3 | RFS19-Modificar Funcionários | 1d? | 2018-07-13 | 2018-07-16 | 62 | 0d | Diogo [50%] | 4h | 600 |
| 64 | 1.4.3.1.4 | RFS20-Remover Funcionários | 1d? | 2018-07-16 | 2018-07-17 | 63 | 0d | Diogo [50%] | 4h | 600 |
| 65 | 1.4.3.2 | Teste RFC05 | 1d? | 2018-07-17 | 2018-07-18 | 64 | 0d | Matheus [50%] | 4h | 600 |
| 66 | 1.4.3.3 | **RFC06-Controle Equipamento** | 4d? | 2018-07-18 | 2018-07-24 |  | 0d |  | 16h | 2,400 |
| 67 | 1.4.3.3.1 | RFS21-Cadastrar Equipamento | 1d? | 2018-07-18 | 2018-07-19 | 65 | 0d | Ádrian [50%] | 4h | 600 |
| 68 | 1.4.3.3.2 | RFS22-Consultar Equipamento | 1d? | 2018-07-19 | 2018-07-20 | 67 | 0d | Ádrian [50%] | 4h | 600 |
| 69 | 1.4.3.3.3 | RFS23-Modificar Equipamento | 1d? | 2018-07-20 | 2018-07-23 | 68 | 0d | Ádrian [50%] | 4h | 600 |
| 70 | 1.4.3.3.4 | RFS24-Remover Equipamento | 1d? | 2018-07-23 | 2018-07-24 | 69 | 0d | Ádrian [50%] | 4h | 600 |
| 71 | 1.4.3.4 | Teste RFC06 | 1d? | 2018-07-24 | 2018-07-25 | 70 | 0d | João [50%] | 4h | 600 |
| 72 | 1.4.4 | **Realease 4** | 15.5d? | 2018-07-25 | 2018-08-16 |  | 0d |  | 63.5h | 9,525 |
| 73 | 1.4.4.1 | **RFC07-Relatório de Matrícula de Alunos** | 1d? | 2018-07-25 | 2018-07-26 |  | 0d |  | 4h | 600 |
| 74 | 1.4.4.1.1 | RFS25-Emitir Relatório de Matrícula de Alunos | 1d? | 2018-07-25 | 2018-07-26 | 71 | 0d | Matheus [50%] | 4h | 600 |
| 75 | 1.4.4.2 | **RFC08-Relatório de Contrato de Professores** | 1d? | 2018-07-26 | 2018-07-27 |  | 0d |  | 5h | 750 |
| 76 | 1.4.4.2.1 | RFS26-Emitir Relatório de Contrato de Professores | 1d? | 2018-07-26 | 2018-07-27 | 74 | 0d | João [62.5%] | 5h | 750 |

| ID | WBS | Task | Duration | Start | Finish | Predecessors | Total slack | Resources | Work | Cost |
| --- | --- | --- | --- | --- | --- | --- | --- | --- | --- | --- |
| 77 | 1.4.4.3 | **RNF01-Usabilidade** | 1d? | 2018-07-27 | 2018-07-30 |  | 0d |  | 4h | 600 |
| 78 | 1.4.4.3.1 | RNF01-Interface de Sistemas | 1d? | 2018-07-27 | 2018-07-30 | 76 | 0d | Ádrian [50%] | 4h | 600 |
| 79 | 1.4.4.4 | **RNF02-Desempemho** | 1d? | 2018-07-30 | 2018-07-31 |  | 0d |  | 4h | 600 |
| 80 | 1.4.4.4.1 | RNF02-Sistema Otimizado | 1d? | 2018-07-30 | 2018-07-31 | 78 | 0d | Diogo [50%] | 4h | 600 |
| 81 | 1.4.4.5 | **RNF03-Segurança** | 5d? | 2018-07-31 | 2018-08-07 |  | 0d |  | 19h | 2,850 |
| 82 | 1.4.4.5.1 | RNF03-Segurança e Criptografia | 1d? | 2018-07-31 | 2018-08-01 | 80 | 0d | Matheus [50%] | 4h | 600 |
| 83 | 1.4.4.5.2 | RNF04-Número Mínimo de Caracteres para Senha | 1d? | 2018-08-01 | 2018-08-02 | 82 | 0d | Matheus [50%] | 4h | 600 |
| 84 | 1.4.4.5.3 | RNF05-Limite de Tentativas de Login | 1d? | 2018-08-02 | 2018-08-03 | 83 | 0d | Matheus [50%] | 4h | 600 |
| 85 | 1.4.4.5.4 | RNF06-Logoff Automático | 1d? | 2018-08-03 | 2018-08-06 | 84 | 0d | João [50%] | 4h | 600 |
| 86 | 1.4.4.5.5 | RNF07-Logs de Usuários | 1d? | 2018-08-06 | 2018-08-07 | 85 | 0d | João [37.5%] | 3h | 450 |
| 87 | 1.4.4.6 | **RNF04-Confiabilidade** | 1d? | 2018-08-07 | 2018-08-08 |  | 0d |  | 4h | 600 |
| 88 | 1.4.4.6.1 | RNF08-Sistema e Plataforma | 1d? | 2018-08-07 | 2018-08-08 | 86 | 0d | João [50%] | 4h | 600 |
| 89 | 1.4.4.7 | Teste RFC07 | 1d? | 2018-08-08 | 2018-08-09 | 87 | 0d | Ádrian [37.5%] | 3h | 450 |
| 90 | 1.4.4.8 | Teste RFC08 | 1d? | 2018-08-09 | 2018-08-10 | 89 | 0d | Diogo [50%] | 4h | 600 |
| 91 | 1.4.4.9 | Teste RNF01 | 1d? | 2018-08-10 | 2018-08-13 | 90 | 0d | Matheus [50%] | 4h | 600 |
| 92 | 1.4.4.10 | Teste RNF02 | 1d? | 2018-08-13 | 2018-08-14 | 91 | 0d | João [37.5%] | 3h | 450 |
| 93 | 1.4.4.11 | Teste RNF03 | 0.5d? | 2018-08-14 | 2018-08-15 | 92 | 0d | Ádrian [68.8%]; Diogo [68.8%] | 5.5h | 825 |
| 94 | 1.4.4.12 | Teste RNF04 | 1d? | 2018-08-15 | 2018-08-16 | 93 | 0d | Diogo [50%] | 4h | 600 |
| 95 | 1.5 | **Monitoramento e Controle** | 0.55d? | 2018-08-16 | 2018-08-16 |  | 0d |  | 17.5h | 2,625 |
| 96 | 1.5.1 | Acompanhar Projeto | 0.19d? | 2018-08-16 | 2018-08-16 | 94 | 0d | Ádrian; Diogo; João; Matheus | 6h | 900 |
| 97 | 1.5.2 | **Gerência de Configuração** | 0.36d? | 2018-08-16 | 2018-08-16 |  | 0d |  | 11.5h | 1,725 |
| 98 | 1.5.2.1 | Elaborar Branch | 0.2d? | 2018-08-16 | 2018-08-16 | 96 | 0d | Ádrian; Diogo; João; Matheus | 6.5h | 975 |
| 99 | 1.5.2.2 | Realizar Merge da Branch para a Trunk | 0.16d? | 2018-08-16 | 2018-08-16 | 98 | 0d | Ádrian; Diogo; João; Matheus | 5h | 750 |
